# GaleriaDevoto-SitioWeb-2014

Schedule from MS Project, 2014-05-19 to 2014-07-17, A marks actual dates.
Project para la construcción del sitio web para desktop y mobile (2014)

## Calendars

- Estándar: Mon-Fri 09:00-13:00, 15:00-19:00; Sat-Sun off. Exceptions (off unless hours are given): 2014-05-31 09:00-13:00, 15:00-19:00, 2014-06-07 09:00-13:00, 15:00-19:00.

## Resources

| Resource |
| --- |
| Miriam |
| Gustavo |
| Tamara |
| Dani |
| Gusta |
| Gonzalo |

## Schedule

| ID | WBS | Task | Duration | Start | Finish | Predecessors | Complete | Remaining | Total slack | Free slack | Constraint | Resources | Work | Actual work |
| --- | --- | --- | --- | --- | --- | --- | --- | --- | --- | --- | --- | --- | --- | --- |
| 1 | 1 | **Tareas Comunes** | 45.12d? | 2014-05-19 09:00 A | 2014-07-17 10:00 |  | 21% | 35.5d? | 0d |  |  |  | 147h | 22h |
| 2 | 1.1 | Obtener listado completo de locales | 1h | 2014-05-19 09:00 A | 2014-05-19 10:00 A |  | 100% |  |  |  | start no earlier than 2014-05-19 09:00 | Miriam | 1h | 1h |
| 3 | 1.2 | Sacar fotos de locales | 6h | 2014-05-28 16:00 A | 2014-05-29 12:00 A |  | 100% |  |  |  | finish no earlier than 2014-05-28 18:00 | Gustavo | 6h | 6h |
| 4 | 1.3 | Sacar fotos de galería | 4h? | 2014-05-28 12:00 A | 2014-05-28 18:00 |  | 50% | 2h? | 35.12d |  | finish no earlier than 2014-05-28 18:00 | Gustavo | 4h | 2h |
| 5 | 1.4 | Tomar snapshot de indicadores (sitio web viejo) | 4h? | 2014-06-20 09:00 | 2014-06-20 13:00 | 44, 23 |  |  | 16.5d |  | start no earlier than 2014-05-21 09:00 | Gustavo | 4h |  |
| 6 | 1.5 | Configurar el control de código | 1h | 2014-05-23 09:00 A | 2014-05-23 10:00 A |  | 100% |  |  |  | start no earlier than 2014-05-23 09:00 | Gustavo | 1h | 1h |
| 7 | 1.6 | Detectar user agent con asp.net y redirigir a sitio correcto | 2h | 2014-05-27 09:00 A | 2014-05-27 11:00 A |  | 100% |  |  |  | start no earlier than 2014-05-27 09:00 | Gustavo | 2h | 2h |
| 8 | 1.7 | Preparar el hosting Dattatec para funcionar con ASP.NET | 1h | 2014-05-27 09:00 A | 2014-05-27 10:00 A |  | 100% |  |  |  | start no earlier than 2014-05-27 09:00 | Gustavo | 1h | 1h |
| 9 | 1.8 | Validar código HTML | 8h? | 2014-07-14 10:00 | 2014-07-15 10:00 | 16, 51 |  |  | 1.5d | 0d | start no earlier than 2014-05-21 09:00 | Gustavo | 8h |  |
| 10 | 1.9 | Validar código CSS | 8h? | 2014-07-14 10:00 | 2014-07-15 10:00 | 16, 51 |  |  | 1.5d | 0d | start no earlier than 2014-05-21 09:00 | Gustavo | 8h |  |
| 11 | 1.10 | Agregar validaciones HTML y CSS exitosas al sitio web | 4h? | 2014-07-15 10:00 | 2014-07-15 16:00 | 9, 10 |  |  | 1.5d |  | start no earlier than 2014-05-21 09:00 | Gustavo | 4h |  |
| 12 | 1.11 | Obtener descripción detallada de locales | 6h | 2014-05-19 09:00 A | 2014-05-19 17:00 |  | 25% | 4.5h | 42.25d |  |  | Gustavo; Tamara; Miriam | 18h | 4.5h |
| 13 | 1.12 | Obtener productos promocionados por local | 6h | 2014-05-19 09:00 A | 2014-05-19 17:00 |  | 25% | 4.5h | 42.25d |  |  | Gustavo; Tamara; Miriam | 18h | 4.5h |
| 14 | 1.13 | Prueba UAT (Aceptación de usuario) | 16h? | 2014-07-15 10:00 | 2014-07-17 10:00 | 16, 51, 61, 65 |  |  | 0d |  |  | Dani; Miriam; Tamara; Gustavo | 64h |  |
| 15 | 1.14 | Agregar sitio a Yelp | 8h? | 2014-07-14 10:00 | 2014-07-15 10:00 | 16, 51 |  |  | 2d |  |  | Gustavo | 8h |  |
| 16 | 2 | **Construcción de nuevo sitio web desktop** | 32.12d? | 2014-05-26 09:00 A | 2014-07-07 10:00 |  | 10% | 29.01d? | 0d |  |  |  | 411h | 33.5h |
| 17 | 2.1 | Realizar boceto de sitio web en programa de diseño gráfico | 3h | 2014-05-26 09:00 A | 2014-05-26 12:00 A |  | 100% |  |  |  | start no earlier than 2014-05-26 09:00 | Tamara | 3h | 3h |
| 18 | 2.2 | Definir colores | 3h | 2014-05-27 09:00 A | 2014-05-27 12:00 A |  | 100% |  |  |  | start no earlier than 2014-05-27 09:00 | Tamara | 3h | 3h |
| 19 | 2.3 | Definir tipo y tamaño de fuente | 1h | 2014-05-28 09:00 A | 2014-05-28 10:00 |  | 50% | 0.5h | 30d |  | start no earlier than 2014-05-28 09:00 | Tamara | 1h | 0.5h |
| 20 | 2.4 | Definir resolución mínima sin scroll | 1h | 2014-05-29 09:00 A | 2014-05-29 10:00 A |  | 100% |  |  |  | start no earlier than 2014-05-29 09:00 | Gustavo; Tamara | 2h | 2h |
| 21 | 2.5 | Construir un icono (favicon) | 1h? | 2014-07-07 09:00 | 2014-07-07 10:00 |  |  |  | 0d |  | start no earlier than 2014-07-07 09:00 | Tamara | 1h |  |
| 22 | 2.6 | Prueba integral en navegadores | 8h? | 2014-06-20 09:00 | 2014-06-20 19:00 | 23, 44 |  |  | 10.12d |  |  | Gustavo | 8h |  |
| 23 | 2.7 | **Páginas web principales** | 5.12d? | 2014-05-30 09:00 A | 2014-06-05 10:00 |  | 33% | 3.42d? | 22d | 11.88d |  |  | 51h | 19h |
| 24 | 2.7.1 | **Home** | 4d? | 2014-05-30 09:00 A | 2014-06-03 19:00 |  | 23% | 3.08d? | 23.12d |  |  |  | 20h | 6h |
| 25 | 2.7.1.1 | Definir título | 1h? | 2014-05-30 09:00 | 2014-05-30 10:00 |  |  |  | 27d |  | start no earlier than 2014-05-30 09:00 | Gustavo; Tamara; Dani | 3h |  |
| 26 | 2.7.1.2 | Definir descripción | 1h? | 2014-05-30 09:00 | 2014-05-30 10:00 |  |  |  | 27d |  | start no earlier than 2014-05-30 09:00 | Gustavo; Tamara; Dani | 3h |  |
| 27 | 2.7.1.3 | Definir contenido estático y dinámico | 3h | 2014-05-31 09:00 A | 2014-05-31 12:00 A |  | 100% |  |  |  | start no earlier than 2014-05-31 09:00 | Gustavo; Tamara | 6h | 6h |
| 28 | 2.7.1.4 | Construir MasterPage Principal | 8h? | 2014-06-03 09:00 | 2014-06-03 19:00 | 27 |  |  | 23.12d |  | start no earlier than 2014-06-03 09:00 | Gustavo | 8h |  |

| ID | WBS | Task | Duration | Start | Finish | Predecessors | Complete | Remaining | Total slack | Free slack | Constraint | Resources | Work | Actual work |
| --- | --- | --- | --- | --- | --- | --- | --- | --- | --- | --- | --- | --- | --- | --- |
| 29 | 2.7.2 | **Contacto** | 2.12d | 2014-06-02 09:00 A | 2014-06-04 10:00 A |  | 100% |  |  |  |  |  | 13h | 13h |
| 30 | 2.7.2.1 | Definir título | 1h | 2014-06-04 09:00 A | 2014-06-04 10:00 A |  | 100% |  |  |  | start no earlier than 2014-06-04 09:00 | Gustavo; Tamara; Dani | 3h | 3h |
| 31 | 2.7.2.2 | Definir descripción | 1h | 2014-06-04 09:00 A | 2014-06-04 10:00 A |  | 100% |  |  |  | start no earlier than 2014-06-04 09:00 | Gustavo; Tamara; Dani | 3h | 3h |
| 32 | 2.7.2.3 | Agregar la información que aparece en página ubicación | 4h | 2014-06-02 09:00 A | 2014-06-02 13:00 A |  | 100% |  |  |  | start no earlier than 2014-06-02 09:00 | Tamara | 4h | 4h |
| 33 | 2.7.2.4 | Actualizar transporte público | 1h | 2014-06-02 09:00 A | 2014-06-02 10:00 A |  | 100% |  |  |  | start no earlier than 2014-06-02 09:00 | Tamara | 1h | 1h |
| 34 | 2.7.2.5 | Agregar link a fan page Facebook | 1h | 2014-06-02 09:00 A | 2014-06-02 10:00 A |  | 100% |  |  |  | start no earlier than 2014-06-02 09:00 | Tamara | 1h | 1h |
| 35 | 2.7.2.6 | Aclarar horarios de atención al público y de administración | 1h | 2014-06-02 09:00 A | 2014-06-02 10:00 A |  | 100% |  |  |  | start no earlier than 2014-06-02 09:00 | Tamara | 1h | 1h |
| 36 | 2.7.3 | **Villa Devoto** | 2.12d? | 2014-06-03 09:00 | 2014-06-05 10:00 |  |  |  | 22d |  |  |  | 10h |  |
| 37 | 2.7.3.1 | Definir título | 1h? | 2014-06-05 09:00 | 2014-06-05 10:00 |  |  |  | 22d |  | start no earlier than 2014-06-05 09:00 | Gustavo; Tamara; Dani | 3h |  |
| 38 | 2.7.3.2 | Definir descripción | 1h? | 2014-06-05 09:00 | 2014-06-05 10:00 |  |  |  | 22d |  | start no earlier than 2014-06-05 09:00 | Gustavo; Tamara; Dani | 3h |  |
| 39 | 2.7.3.3 | Agregar direcciones de los lugares | 4h? | 2014-06-03 09:00 | 2014-06-03 13:00 |  |  |  | 23.62d |  | start no earlier than 2014-06-03 09:00 | Tamara | 4h |  |
| 40 | 2.7.4 | **Error 404 (Not Found)** | 0.5d? | 2014-06-04 09:00 | 2014-06-04 13:00 |  |  |  | 22.62d |  |  |  | 8h |  |
| 41 | 2.7.4.1 | Definir estructura | 4h? | 2014-06-04 09:00 | 2014-06-04 13:00 |  |  |  | 22.62d |  | start no earlier than 2014-06-04 09:00 | Tamara | 4h |  |
| 42 | 2.7.4.2 | Definir imagen | 2h? | 2014-06-04 09:00 | 2014-06-04 11:00 |  |  |  | 22.88d |  | start no earlier than 2014-06-04 09:00 | Tamara | 2h |  |
| 43 | 2.7.4.3 | Definir texto | 2h? | 2014-06-04 09:00 | 2014-06-04 11:00 |  |  |  | 22.88d |  | start no earlier than 2014-06-04 09:00 | Tamara | 2h |  |
| 44 | 2.8 | **Páginas de locales** | 12d? | 2014-06-05 09:00 A | 2014-06-19 19:00 |  | 2% | 11.8d? | 10.12d | 0d |  |  | 342h | 6h |
| 45 | 2.8.1 | Definir títulos | 40h? | 2014-06-07 09:00 | 2014-06-12 19:00 |  |  |  | 15.12d |  | start no earlier than 2014-06-07 09:00 | Gustavo; Tamara; Dani | 120h |  |
| 46 | 2.8.2 | Definir descripciones | 40h? | 2014-06-07 09:00 | 2014-06-12 19:00 |  |  |  | 15.12d |  | start no earlier than 2014-06-07 09:00 | Gustavo; Tamara; Dani | 120h |  |
| 47 | 2.8.3 | Definir estructura de página | 3h | 2014-06-05 09:00 A | 2014-06-05 12:00 A |  | 100% |  |  |  | start no earlier than 2014-06-05 09:00 | Gustavo; Tamara | 6h | 6h |
| 48 | 2.8.4 | Construir MasterPage Local | 8h? | 2014-06-06 09:00 | 2014-06-06 19:00 | 47 |  |  | 10.12d | 0d | start no earlier than 2014-06-06 09:00 | Gustavo | 8h |  |
| 49 | 2.8.5 | Buscar un slider de imágenes y aprender a usarlo | 8h? | 2014-06-07 09:00 | 2014-06-07 19:00 |  |  |  | 19.12d |  | start no earlier than 2014-06-07 09:00 | Gustavo | 8h |  |
| 50 | 2.8.6 | Construir páginas | 80h? | 2014-06-07 09:00 | 2014-06-19 19:00 | 48 |  |  | 10.12d |  | start no earlier than 2014-06-07 09:00 | Tamara | 80h |  |
| 51 | 3 | **Construcción de nuevo sitio web mobile** | 5d? | 2014-07-07 10:00 A | 2014-07-14 10:00 | 16 | 10% | 4.51d? | 0d |  |  |  | 92h | 8h |
| 52 | 3.1 | Realizar boceto de sitio web en programa de diseño gráfico | 8h? | 2014-07-07 10:00 | 2014-07-08 10:00 |  |  |  | 4d |  |  | Tamara | 8h |  |
| 53 | 3.2 | Definir colores | 2h | 2014-07-07 10:00 A | 2014-07-07 12:00 A |  | 100% |  |  |  | start no earlier than 2014-06-24 09:00 | Tamara | 2h | 2h |
| 54 | 3.3 | Definir tipo y tamaño de fuente | 2h | 2014-07-07 10:00 A | 2014-07-07 12:00 A |  | 100% |  |  |  | start no earlier than 2014-06-24 09:00 | Tamara | 2h | 2h |
| 55 | 3.4 | Definir estructura del sitio | 8h? | 2014-07-07 10:00 | 2014-07-08 10:00 |  |  |  | 4d |  | start no earlier than 2014-06-24 09:00 | Gustavo; Tamara | 16h |  |
| 56 | 3.5 | Definir páginas del sitio | 2h? | 2014-07-07 10:00 | 2014-07-07 12:00 |  |  |  | 4.75d |  | start no earlier than 2014-06-25 09:00 | Gustavo; Tamara | 4h |  |
| 57 | 3.6 | Construir página principal | 8h? | 2014-07-07 10:00 | 2014-07-08 10:00 |  |  |  | 4d |  | start no earlier than 2014-06-26 09:00 | Tamara | 8h |  |
| 58 | 3.7 | Construir página de locales | 40h? | 2014-07-07 10:00 | 2014-07-14 10:00 |  |  |  | 0d |  | start no earlier than 2014-06-27 09:00 | Tamara | 40h |  |
| 59 | 3.8 | Construir página de contacto | 4h | 2014-07-07 10:00 A | 2014-07-07 16:00 A |  | 100% |  |  |  | start no earlier than 2014-07-04 09:00 | Tamara | 4h | 4h |
| 60 | 3.9 | Prueba integral en navegadores mobile | 8h? | 2014-07-07 10:00 | 2014-07-08 10:00 |  |  |  | 4d |  | start no earlier than 2014-07-04 09:00 | Gustavo | 8h |  |

| ID | WBS | Task | Duration | Start | Finish | Predecessors | Complete | Remaining | Total slack | Constraint | Resources | Work | Actual work |
| --- | --- | --- | --- | --- | --- | --- | --- | --- | --- | --- | --- | --- | --- |
| 61 | 4 | **Actualización de datos en Google Places** | 0.25d | 2014-05-19 09:00 A | 2014-05-19 11:00 A |  | 100% |  |  |  |  | 5h | 5h |
| 62 | 4.1 | Pedir descripción principal de ficha | 2h | 2014-05-19 09:00 A | 2014-05-19 11:00 A |  | 100% |  |  |  | Gustavo | 2h | 2h |
| 63 | 4.2 | Sacar el télefono de la ficha | 1h | 2014-05-19 09:00 A | 2014-05-19 10:00 A |  | 100% |  |  |  | Gustavo | 1h | 1h |
| 64 | 4.3 | Dar de alta ficha e investigar perfil de Google + | 2h | 2014-05-19 09:00 A | 2014-05-19 11:00 A |  | 100% |  |  |  | Gustavo | 2h | 2h |
| 65 | 5 | **Fan page Facebook** | 1d? | 2014-07-14 10:00 | 2014-07-15 10:00 | 51 |  |  | 0d |  |  | 26h |  |
| 66 | 5.1 | Subir Fotos | 2h? | 2014-07-14 10:00 | 2014-07-14 12:00 |  |  |  | 0.75d |  | Tamara | 2h |  |
| 67 | 5.2 | Escribir descripción y proposito de fan page | 4h? | 2014-07-14 10:00 | 2014-07-14 16:00 |  |  |  | 0.5d | start no earlier than 2014-07-08 09:00 | Tamara | 4h |  |
| 68 | 5.3 | Comentar a Gonzalo el proposito de la fan page | 4h? | 2014-07-14 10:00 | 2014-07-14 16:00 |  |  |  | 0.5d | start no earlier than 2014-07-09 09:00 | Gustavo | 4h |  |
| 69 | 5.4 | Subir promociones | 8h? | 2014-07-14 10:00 | 2014-07-15 10:00 |  |  |  | 0d | start no earlier than 2014-07-10 09:00 | Gonzalo; Gustavo | 16h |  |
| 70 | 6 | **Tareas Repetitivas** | 1d? | 2014-05-19 09:00 A | 2014-05-19 19:00 |  | 5% | 0.95d? | 44.12d |  |  | 12h | 1h |
| 71 | 6.1 | Actualizar documento de SEO | 8h? | 2014-05-19 09:00 | 2014-05-19 19:00 |  |  |  | 42d | start no earlier than 2014-05-19 09:00 | Gustavo | 8h |  |
| 72 | 6.2 | Probar sitio web en PC | 1h | 2014-05-19 09:00 A | 2014-05-19 10:00 |  | 25% | 0.75h | 45d |  | Tamara; Gustavo | 2h | 0.5h |
| 73 | 6.3 | Probar sitio web en dispositivos móviles | 1h | 2014-05-19 09:00 A | 2014-05-19 10:00 |  | 25% | 0.75h | 45d |  | Tamara; Gustavo | 2h | 0.5h |
